# 消金渠道接入专项项目

Schedule from a web Gantt chart, 2024-05-20 to 2024-09-19.
Saturdays and Sundays are off

## Schedule

| ID | WBS | Task | Type | Duration | Start | Finish | Predecessors | Status | inPeople |
| --- | --- | --- | --- | --- | --- | --- | --- | --- | --- |
| 2 | 1 | 项目启动会 |  | 1d | 2024-05-20 | 2024-05-20 |  | waiting |  |
| 3 | 2 | 一阶段-需求评审 |  | 5d | 2024-05-20 | 2024-05-24 |  | waiting | 许辰辰、马简、叶仕峰 |
| 4 | 3 | 一阶段-需求反讲 |  | 1d | 2024-05-29 | 2024-05-29 |  | waiting |  |
| 5 | 4 | 一阶段-设计评审 |  | 5d | 2024-05-27 | 2024-05-31 | 3 | waiting |  |
| 6 | 5 | 一阶段-研发自测 |  | 15d | 2024-06-03 | 2024-06-21 | 5 | waiting |  |
| 7 | 6 | 一阶段-内外联调 |  | 5d | 2024-06-17 | 2024-06-21 |  | waiting |  |
| 8 | 7 | 一阶段-测试案例撰写&评审 |  | 5d | 2024-06-17 | 2024-06-21 |  | waiting |  |
| 9 | 8 | 一阶段-SIT测试 |  | 10d | 2024-06-24 | 2024-07-05 | 8 | waiting |  |
| 10 | 9 | 一阶段-UAT测试 |  | 10d | 2024-07-08 | 2024-07-19 | 9 | waiting |  |
| 11 | 10 | 一阶段-上线 | fixed start, fixed end | 1d | 2024-07-25 | 2024-07-25 |  | waiting |  |
| 12 | 11 | 二阶段-需求评审 |  | 5d | 2024-06-03 | 2024-06-07 |  | waiting |  |
| 13 | 12 | 二阶段-需求反讲 |  | 1d | 2024-06-12 | 2024-06-12 |  | waiting |  |
| 14 | 13 | 二阶段-设计评审 |  | 5d | 2024-06-10 | 2024-06-14 | 12 | waiting |  |
| 15 | 14 | 二阶段-研发自测 |  | 15d | 2024-06-17 | 2024-07-05 | 14 | waiting |  |
| 16 | 15 | 二阶段-内外联调 |  | 10d | 2024-07-01 | 2024-07-12 |  | waiting |  |
| 17 | 16 | 二阶段-测试案例撰写&评审 |  | 10d | 2024-07-01 | 2024-07-12 |  | waiting |  |
| 18 | 17 | 二阶段-SIT测试 |  | 10d | 2024-07-15 | 2024-07-26 | 17 | waiting |  |
| 19 | 18 | 二阶段-UAT测试 |  | 10d | 2024-07-29 | 2024-08-09 | 18 | waiting |  |
| 20 | 19 | 二阶段-上线 | fixed start, fixed end | 1d | 2024-08-08 | 2024-08-08 |  | waiting |  |
| 21 | 20 | 项目-整体上线 | fixed start, fixed end | 1d | 2024-08-22 | 2024-08-22 |  | waiting |  |
| 22 | 21 | 反思总结材料撰写 |  | 20d | 2024-08-23 | 2024-09-19 | 21 | waiting |  |
| 23 | 22 | 反思总结会 |  | 1d | 2024-09-19 | 2024-09-19 |  | waiting |  |

Notes:
- 3: 小鹅花、滴滴、携程完成需求准出-DDL
- 5: 关键系统完成设计评审及提交对应材料
- 9: 需进行1-2天的冒烟测试
- 11: 部分上线
- 12: 携程VIP、58完成需求准出-DDL
- 18: 需进行1-2天的冒烟测试
- 20: 部分上线
- 21: 全部上线
